# Project1-b22110006017

Schedule from MS Project, 2024-08-01 to 2025-04-24, 9 hours a day, A marks actual dates.

## Calendars

- Standard: Mon-Fri 08:30-13:00, 14:00-18:00; Sat-Sun off. Exceptions (off unless hours are given): 2024-08-14 (Independence Day).

## Schedule

| ID | WBS | Task | Type | Duration | Start | Finish | Predecessors | Complete | Remaining | Total slack | Free slack | Constraint |
| --- | --- | --- | --- | --- | --- | --- | --- | --- | --- | --- | --- | --- |
| 2 | 1 | Start/Commencement of Work | milestone | 0d | 2024-08-01 A | 2024-08-01 A |  | 100% |  |  |  |  |
| 3 | 2 | Mobilization at Site |  | 15d | 2024-08-21 A | 2024-09-11 A | 2 | 100% |  |  |  |  |
| 4 | 3 | Surveying & Layout |  | 6d | 2024-08-27 A | 2024-09-04 A | 3FS-11d | 100% |  |  |  |  |
| 5 | 4 | Excavation |  | 10d | 2024-08-28 | 2024-09-11 | 4FS-5d |  |  | 151.56d |  |  |
| 6 | 5 | Footing |  | 12d | 2024-09-03 A | 2024-09-20 A | 5FS-6d | 100% |  |  |  |  |
| 7 | 6 | Column upto Plinth Leve |  | 10d | 2024-09-06 A | 2024-09-23 A | 6FS-9d | 100% |  |  |  |  |
| 8 | 7 | Backfilling in Footing |  | 7d | 2024-09-09 A | 2024-09-19 | 7FS-9d | 75% | 1.75d | 5.25d | 0d |  |
| 9 | 8 | Plinth Beam |  | 7d | 2024-09-11 A | 2024-09-23 | 8FS-5d | 75% | 1.75d | 7.5d | 0d |  |
| 10 | 9 | Earth Filling |  | 3d | 2024-09-23 A | 2024-09-26 A | 9 | 100% |  |  |  |  |
| 11 | 10 | Anti Termite Treatment |  | 3d | 2024-09-24 | 2024-09-27 | 10FS-2d |  |  | 139.56d | 0d |  |
| 12 | 11 | CC Flooring with PCC |  | 4d | 2024-09-24 | 2024-09-30 | 11FS-3d |  |  | 139.56d |  |  |
| 13 | 12 | Column GF to 1st Floor |  | 10d | 2024-09-17 A | 2024-10-01 | 9FS-4d | 75% | 2.5d | 3.75d | 0d |  |
| 14 | 13 | 1st Floor Slab |  | 15d | 2024-09-19 A | 2024-10-11 | 13FS-8d | 25% | 11.25d | 10.5d | 0d |  |
| 15 | 14 | Brickwork at Ground Floor |  | 14d | 2024-09-24 A | 2024-10-15 | 14FS-12d | 75% | 3.5d | 2.5d | 0d |  |
| 16 | 15 | Internal Plaster at GF |  | 14d | 2024-10-03 A | 2024-10-24 A | 15FS-7d | 100% |  |  |  |  |
| 17 | 16 | Flooring work-GF |  | 7d | 2024-10-18 A | 2024-10-29 A | 16FS-4d | 100% |  |  |  |  |
| 18 | 17 | Door & Window work-GF |  | 10d | 2024-10-04 A | 2024-10-21 | 15FS-6d | 25% | 7.5d | 125.56d |  |  |
| 19 | 18 | Internal Painting-GF |  | 14d | 2024-10-15 A | 2024-11-04 | 16FS-7d | 25% | 10.5d | 115.56d |  |  |
| 20 | 19 | Column 1st to 2nd Floor |  | 16d | 2024-10-14 A | 2024-11-06 A | 14FS+1d | 100% |  |  |  |  |
| 21 | 20 | 2nd Floor Slab |  | 20d | 2024-10-21 A | 2024-11-19 A | 20FS-11d | 100% |  |  |  |  |
| 22 | 21 | Brickwork at First Floor |  | 15d | 2024-10-31 A | 2024-11-22 A | 21FS-12d | 100% |  |  |  |  |
| 23 | 22 | Internal Plaster at FF |  | 14d | 2024-11-11 A | 2024-12-02 A | 22FS-9d | 100% |  |  |  |  |
| 24 | 23 | Flooring work-FF |  | 7d | 2024-11-19 A | 2024-11-28 | 23FS-8d | 75% | 1.75d | 5d | 0d |  |
| 25 | 24 | Door & Window work-FF |  | 10d | 2024-11-13 A | 2024-11-27 | 24FS-11d | 50% | 5d | 3.5d | 0d |  |
| 26 | 25 | Internal Painting-FF |  | 14d | 2024-10-31 A | 2024-11-21 | 25FS-18d | 25% | 10.5d | 103.56d |  |  |
| 27 | 26 | Column 2nd to Terrace Floor |  | 12.83d | 2024-11-07 A | 2024-11-26 A | 26FS-10d | 100% |  |  |  |  |
| 28 | 27 | Terrace Floor Slab |  | 18d | 2024-11-12 A | 2024-12-09 A | 27FS-10d | 100% |  |  |  |  |
| 29 | 28 | Brickwork at Second Floor |  | 12d | 2024-12-04 A | 2024-12-20 | 28FS-3d | 50% | 6d | 4d | 0d |  |
| 30 | 29 | Internal Plaster-SF |  | 10d | 2024-12-10 A | 2024-12-24 A | 29FS-8d | 100% |  |  |  |  |
| 31 | 30 | Flooring work-SF |  | 8d | 2024-12-20 A | 2025-01-02 | 29, 30FS-8d | 50% | 4d | 75.72d |  |  |
| 32 | 31 | Door & Window Work-SF |  | 7d | 2024-11-29 A | 2024-12-11 | 28FS-5d | 25% | 5.25d | 3.5d | 0d |  |
| 33 | 32 | Internal Painting-SF |  | 14d | 2024-12-04 A | 2024-12-24 | 32FS-5d | 25% | 10.5d | 0d |  |  |
| 34 | 33 | External Plaster-SF |  | 15.61d | 2024-12-12 | 2025-04-24 | 32FS-7d, 33FS-8d |  |  | 0d |  | start no earlier than 2024-08-19 |
| 35 | 34 | Terrace Water Proofing |  | 10d | 2024-12-17 A | 2025-01-01 A | 34FS-8d | 100% |  |  |  | start no earlier than 2024-08-07 |
| 36 | 35 | External Painting |  | 12d | 2024-12-18 | 2025-01-06 | 35FS-9d |  |  | 2.5d | 0d | start no earlier than 2024-12-18 |
| 37 | 36 | Cleaning Snags Work |  | 10d | 2024-12-24 A | 2025-01-08 | 36FS-8d | 25% | 7.5d | 71.72d | 0d |  |
| 38 | 37 | Finish & Handover |  | 5d | 2024-12-30 | 2025-01-06 | 37FS-7d |  |  | 72.72d | 0d |  |
| 39 | 38 | Packup |  | 1d | 2025-01-06 | 2025-01-07 | 38 |  |  | 72.72d |  |  |
